Schedule from ProjectLibre, 2000-01-06 to 2001-05-02.

## Calendars

- Painting Contractor: Mon-Fri 17:00-21:00, 22:00-02:00; Sat-Sun off.

## Resources

| Resource |
| --- |
| 未割り当て |
| G.C. General Management |
| G.C. Project Management |
| G.C. Procurement |
| G.C. Scheduler |
| G.C. Accounting |
| G.C. Superintendent |
| G.C. Survey Crew |
| G.C. Rough Carpenter Crew |
| G.C. Labor Crew |
| G.C. Concrete Crew |
| G.C. Finish Carpenter Crew |
| Site Grading Contractor |
| Plumbing Contractor |
| Plumbing Contractor Management |
| Electric Contractor |
| Electric Contractor Management |
| HVAC Contractor |
| HVAC Contractor Management |
| Elevator Contractor |
| Elevator Contractor Management |
| Steel Erection Contractor |
| Steel Erection Contractor Management |
| Drywall Contractor |
| Masonry Contractor |
| Tile Contractor |
| Roofing Contractor |
| Roofing Contractor Management |
| Window Contractor |
| Carpet Contractor |
| Landscape Contractor |
| Paving Contractor |
| Painting Contractor |

## Schedule

| ID | WBS | Task | Duration | Start | Finish | Predecessors | Complete | Total slack | Resources | Work | Actual work |
| --- | --- | --- | --- | --- | --- | --- | --- | --- | --- | --- | --- |
| 2 | 1.1 | General Conditions | 17d | 2000-01-06 | 2000-01-29 |  | 8% | 327d |  |  |  |
| 4 | 1 | **Three-story Office Building (76,000 square feet)** | 344d | 2000-01-06 | 2001-05-02 |  | 1% |  |  |  |  |
| 5 | 1.1.1 | **Receive notice to proceed and sign contract** | 3d | 2000-01-06 | 2000-01-11 |  | 100% |  |  | 24h | 24h |
| 6 | 1.1.2 | Submit bond and insurance documents | 2d | 2000-01-06 | 2000-01-08 |  |  | 338d | G.C. Project Management | 20h |  |
| 7 | 1.1.3 | Prepare and submit project schedule | 2d | 2000-01-10 | 2000-01-12 | 6 |  | 338d | G.C. Project Management [25%] | 20h |  |
| 8 | 1.1.4 | Prepare and submit schedule of values | 2d | 2000-01-12 | 2000-01-14 | 7 |  | 338d | G.C. Project Management | 17.6h |  |
| 9 | 1.1.5 | Obtain building permits | 4d | 2000-01-11 | 2000-01-15 | 5 |  | 99d | G.C. Project Management [50%] | 32h |  |
| 10 | 1.1.6 | Submit preliminary shop drawings | 10d | 2000-01-17 | 2000-01-29 | 9 |  | 99d | G.C. Project Management [50%] | 80h |  |
| 11 | 1.1.7 | Submit monthly requests for payment | 1d | 2000-01-06 | 2000-01-07 | 5 | 30% | 10d |  | 8h | 2.4h |
| 12 | 1.2 | **Long Lead Procurement** | 70d | 2000-01-07 | 2000-04-14 |  | 6% | 224d |  |  |  |
| 13 | 1.2.1 | Submit shop drawings and order long lead items - steel | 10d | 2000-01-07 | 2000-01-21 | 11 |  | 10d |  | 80h |  |
| 14 | 1.2.2 | Submit shop drawings and order long lead items - roofing | 10d | 2000-01-31 | 2000-02-12 | 10 |  | 268d |  | 80h |  |
| 15 | 1.2.3 | Submit shop drawings and order long lead items - elevator | 10d | 2000-01-26 | 2000-02-09 | 10 | 100% | 261d |  | 80h | 80h |
| 16 | 1.2.4 | Submit shop drawings and order long lead items - plumbing | 10d | 2000-01-31 | 2000-02-12 | 10 |  | 99d |  | 80h |  |
| 17 | 1.2.5 | Submit shop drawings and order long lead items - electric | 10d | 2000-01-31 | 2000-02-12 | 10 |  | 99d |  | 80h |  |
| 18 | 1.2.6 | Submit shop drawings and order long lead items - HVAC | 10d | 2000-01-31 | 2000-02-12 | 10 |  | 99d |  | 80h |  |
| 19 | 1.2.7 | Detail, fabricate and deliver steel | 60d | 2000-01-21 | 2000-04-14 | 13 |  | 10d | Steel Erection Contractor [50%] | 480h |  |
| 20 | 1.3 | **Mobilize on Site** | 10d | 2000-01-11 | 2000-01-25 |  |  |  |  |  |  |
| 21 | 1.3.3 | Set up site office | 3d | 2000-01-13 | 2000-01-18 | 22, 23 |  |  |  | 26.4h |  |
| 22 | 1.3.1 | Install temporary power | 2d | 2000-01-11 | 2000-01-13 | 5 |  |  |  | 16h |  |
| 23 | 1.3.2 | Install temporary water service | 2d | 2000-01-11 | 2000-01-13 | 5 |  |  |  | 16h |  |
| 24 | 1.3.4 | Set line and grade benchmarks | 3d | 2000-01-18 | 2000-01-21 | 21 |  |  |  | 24h |  |
| 25 | 1.3.5 | Prepare site - lay down yard and temporary fencing | 2d | 2000-01-21 | 2000-01-25 | 24 |  |  |  | 17.6h |  |
| 26 | 1.4 | **Site Grading and Utilities** | 35d | 2000-01-25 | 2000-03-14 |  |  |  |  |  |  |
| 27 | 1.4.1 | Clear and grub site | 3d | 2000-01-25 | 2000-01-28 | 21, 25 |  |  |  | 24h |  |
| 28 | 1.4.2 | Stone site access and temporary parking area | 2d | 2000-01-28 | 2000-02-01 | 27, 25 |  |  |  | 16h |  |
| 29 | 1.4.3 | Rough grade site (cut and fill) | 5d | 2000-02-01 | 2000-02-08 | 28 |  |  |  | 40h |  |
| 30 | 1.4.4 | Install storm drainage | 10d | 2000-02-08 | 2000-02-22 | 29 |  | 9d |  | 80h |  |
| 31 | 1.4.5 | Install exterior fire line and building fire riser | 10d | 2000-02-08 | 2000-02-22 | 29 |  |  |  | 80h |  |
| 32 | 1.4.6 | Perform final site grading | 10d | 2000-02-22 | 2000-03-07 | 30FF+1d, 31 |  |  |  | 80h |  |
| 33 | 1.4.7 | Erect building batter boards and layout building | 5d | 2000-03-07 | 2000-03-14 | 32 |  |  |  | 40h |  |

Notes:
- 11: Monthly requests for payment can be entered as a recurring task. See the Help topic "Enter a recurring task."

| ID | WBS | Task | Duration | Start | Finish | Predecessors | Total slack | Resources | Work |
| --- | --- | --- | --- | --- | --- | --- | --- | --- | --- |
| 34 | 1.5 | **Foundations** | 33d | 2000-03-14 | 2000-04-28 |  | 204d |  |  |
| 35 | 1.5.1 | Excavate foundations | 10d | 2000-03-14 | 2000-03-28 | 33 |  |  | 40h |
| 36 | 1.5.2 | Excavate elevator pit | 2d | 2000-03-14 | 2000-03-16 | 33 | 214d |  | 16h |
| 37 | 1.5.3 | Form column piers and spread foundations | 4d | 2000-03-28 | 2000-04-01 | 35 |  |  | 32h |
| 38 | 1.5.4 | Rough-in electric and plumbing in elevator | 4d | 2000-03-16 | 2000-03-22 | 36 | 214d |  | 64h |
| 39 | 1.5.5 | テスト | 4d | 2000-03-22 | 2000-03-28 | 38 | 214d |  | 32h |
| 40 | 1.5.6 | 猫 | 4d | 2000-04-03 | 2000-04-07 | 37 |  |  | 32h |
| 41 | 1.5.7 | 狐と牛 | 5d | 2000-04-07 | 2000-04-14 | 40 |  |  | 40h |
| 42 | 1.5.8 | Pour concrete elevator walls | 1d | 2000-03-28 | 2000-03-29 | 39 | 214d |  | 8h |
| 43 | 1.5.9 | Cure elevator wall concrete | 7d | 2000-03-29 | 2000-04-07 | 42 | 214d |  | 5.6h |
| 44 | 1.5.10 | Cure piers and foundations | 7d | 2000-04-14 | 2000-04-25 | 41 |  |  | 5.6h |
| 45 | 1.5.11 | Strip wall forms | 1d | 2000-04-07 | 2000-04-08 | 43 | 214d |  | 0.8h |
| 46 | 1.5.12 | Strip column piers and foundation forms | 3d | 2000-04-25 | 2000-04-28 | 44 |  |  | 24h |
| 47 | 1.5.13 | Install pneumatic tube in elevator pit | 3d | 2000-04-10 | 2000-04-13 | 45 | 214d |  | 24h |
| 48 | 1.5.14 | Prepare and pour concrete floor in elevator pit | 1d | 2000-04-13 | 2000-04-14 | 47 | 214d |  | 8h |
| 49 | 1.6 | **Steel Erection** | 45d | 2000-04-28 | 2000-06-30 |  | 139d |  |  |
| 50 | 1.6.1 | Erect steel columns, beams and joist - 1st and 2nd floors | 10d | 2000-04-28 | 2000-05-12 | 46, 19 |  | Steel Erection Contractor | 80h |
| 51 | 1.6.2 | Erect steel columns, beams and joist - 3rd floor and roof | 10d | 2000-05-12 | 2000-05-26 | 50 |  | Steel Erection Contractor | 80h |
| 52 | 1.6.3 | Install miscellaneous iron and bracing - 1st and 2nd floors | 10d | 2000-05-12 | 2000-05-26 | 50 | 164d | Steel Erection Contractor [75%] | 60h |
| 53 | 1.6.4 | Install miscellaneous iron and bracing - 3rd floor and roof | 10d | 2000-05-26 | 2000-06-09 | 51 |  | Steel Erection Contractor [75%] | 60h |
| 54 | 1.6.5 | Install stairs and miscellaneous iron railing | 10d | 2000-06-09 | 2000-06-23 | 53 |  | Steel Erection Contractor [50%] | 40h |
| 55 | 1.6.6 | Touch-up paint on steel | 5d | 2000-06-23 | 2000-06-30 | 54 |  | Steel Erection Contractor [20%] | 8h |
| 56 | 1.7 | **Form and Pour Concrete - Floors and Roof** | 85d | 2000-05-12 | 2000-09-08 |  | 85d |  |  |
| 57 | 1.7.1 | Form 2nd floor including all floor openings | 5d | 2000-06-30 | 2000-07-07 | 55, 16, 17, 18, 50 |  |  | 48h |
| 58 | 1.7.2 | Install rebar and in-floor utilities (including mechanical, electrical, plumbing) | 5d | 2000-05-12 | 2000-05-19 | 50 | 35d |  | 39.6h |
| 59 | 1.7.3 | Pour 2nd floor slab | 4d | 2000-07-07 | 2000-07-13 | 58, 57 |  |  | 32h |
| 60 | 1.7.4 | Cure 2nd floor slab | 7d | 2000-07-13 | 2000-07-22 | 59 |  |  | 5.6h |
| 61 | 1.7.5 | Strip forms from 2nd floor slab | 2d | 2000-07-24 | 2000-07-26 | 60 | 99d |  | 16h |
| 62 | 1.7.6 | Form 3rd floor including all floor openings | 5d | 2000-07-24 | 2000-07-29 | 60 |  |  | 28h |
| 63 | 1.7.7 | Install rebar and in-floor utilities (including mechanical, electrical, plumbing) | 5d | 2000-07-24 | 2000-07-29 | 60 |  |  | 39.6h |
| 64 | 1.7.8 | Pour 3rd floor slab | 4d | 2000-07-31 | 2000-08-04 | 63, 62 |  |  | 32h |
| 65 | 1.7.9 | Cure 3rd floor slab | 7d | 2000-08-04 | 2000-08-15 | 64 |  |  | 5.6h |
| 66 | 1.7.10 | Strip forms from 3rd floor slab | 2d | 2000-08-15 | 2000-08-17 | 65 | 16d |  | 16h |
| 67 | 1.7.11 | Form roof slab including all floor openings | 5d | 2000-08-15 | 2000-08-22 | 65 |  |  | 48h |
| 68 | 1.7.12 | Install rebar and in-floor utilities (including mechanical, electrical, plumbing) | 5d | 2000-08-15 | 2000-08-22 | 65 |  |  | 39.6h |
| 69 | 1.7.13 | Pour roof slab | 4d | 2000-08-22 | 2000-08-26 | 68, 67 |  |  | 32h |
| 70 | 1.7.14 | Cure roof slab | 7d | 2000-08-28 | 2000-09-06 | 69 |  |  | 5.6h |
| 71 | 1.7.15 | Strip forms from roof slab | 2d | 2000-09-06 | 2000-09-08 | 70 |  |  | 16h |
| 72 | 1.7.16 | Form 1st floor | 4d | 2000-07-26 | 2000-08-01 | 61 | 100d |  | 32h |
| 73 | 1.7.17 | Install electrical underground | 5d | 2000-07-26 | 2000-08-02 | 61 | 99d |  | 40h |
| 74 | 1.7.18 | Install plumbing underground | 5d | 2000-07-26 | 2000-08-02 | 61 | 99d |  | 40h |
| 75 | 1.7.19 | Install rebar and in-floor utilities | 4d | 2000-07-26 | 2000-08-01 | 61 | 100d |  | 31.68h |
| 76 | 1.7.20 | Pour 1st floor slab | 4d | 2000-08-02 | 2000-08-08 | 72, 75, 73, 74 | 99d |  | 32h |
| 77 | 1.7.21 | Cure 1st floor slab | 7d | 2000-08-08 | 2000-08-17 | 76 | 99d |  | 5.6h |
| 78 | 1.7.22 | Strip forms from 1st floor slab | 2d | 2000-08-17 | 2000-08-19 | 77 | 99d |  | 16h |

| ID | WBS | Task | Duration | Start | Finish | Predecessors | Total slack | Resources | Work |
| --- | --- | --- | --- | --- | --- | --- | --- | --- | --- |
| 79 | 1.8 | **Carpentry Work** | 15d | 2000-09-08 | 2000-09-29 |  |  |  |  |
| 80 | 1.8.1 | Install exterior sheathing and metal studs | 15d | 2000-09-08 | 2000-09-29 | 66, 71 |  |  | 120h |
| 81 | 1.9 | **Masonry Work** | 110d | 2000-06-09 | 2000-11-10 |  | 80d |  |  |
| 82 | 1.9.1 | Rough-in plumbing at toilets and masonry walls | 20d | 2000-08-21 | 2000-09-16 | 78, 16 | 99d |  | 160h |
| 83 | 1.9.2 | Lay masonry at core, mechanical, and toilets | 20d | 2000-06-09 | 2000-07-07 | 52, 53 | 154d |  | 160h |
| 84 | 1.9.3 | Install exterior masonry work | 25d | 2000-09-29 | 2000-11-03 | 80 |  |  | 200h |
| 85 | 1.9.4 | Install roof drains | 2d | 2000-11-03 | 2000-11-07 | 84 | 77d |  | 16h |
| 86 | 1.9.5 | Install tile in toilet rooms | 10d | 2000-09-18 | 2000-09-30 | 82 | 99d |  | 80h |
| 87 | 1.9.6 | Clean masonry | 5d | 2000-11-03 | 2000-11-10 | 84 | 80d |  | 20h |
| 88 | 1.9.7 | Clean toilet room tile | 5d | 2000-10-02 | 2000-10-07 | 86 | 99d |  | 20h |
| 89 | 1.10 | **Roofing** | 31d | 2000-11-03 | 2000-12-16 |  | 75d |  |  |
| 90 | 1.10.1 | Install flashing at parapet walls | 4d | 2000-11-03 | 2000-11-09 | 84 | 75d |  | 32h |
| 91 | 1.10.2 | Pour lightweight concrete roof fill | 2d | 2000-11-09 | 2000-11-11 | 14, 85, 90 | 75d |  | 16h |
| 92 | 1.10.3 | Install seamless roofing material | 5d | 2000-11-18 | 2000-11-25 | 91FS+5d | 75d |  | 40h |
| 93 | 1.10.4 | Spread stone ballast on seamless roof | 5d | 2000-11-27 | 2000-12-02 | 92 | 75d |  | 40h |
| 94 | 1.10.5 | Set rooftop equipment | 10d | 2000-12-04 | 2000-12-16 | 93 | 75d |  | 80h |
| 95 | 1.11 | **Window wall and store front closures** | 60d | 2000-11-03 | 2001-01-26 |  | 5d |  |  |
| 96 | 1.11.1 | Install window wall aluminum and glass | 25d | 2000-11-03 | 2000-12-08 | 84 |  |  | 200h |
| 97 | 1.11.2 | Install interior stud walls and drywall | 25d | 2000-12-08 | 2001-01-12 | 96 |  |  | 200h |
| 98 | 1.11.3 | Install interior doors and hardware | 10d | 2001-01-12 | 2001-01-26 | 97 | 5d |  | 80h |
| 99 | 1.11.4 | Install store front doors and hardware | 15d | 2000-11-03 | 2000-11-24 | 84 | 35d |  | 120h |
| 100 | 1.12 | **Building Finishes** | 80d | 2000-12-08 | 2001-03-30 |  | 7d |  |  |
| 101 | 1.12.1 | Install millwork and wood trim | 15d | 2001-01-12 | 2001-02-02 | 99, 97 |  |  | 120h |
| 102 | 1.12.2 | Paint walls and woodwork | 20d | 2001-02-02 | 2001-03-02 | 101, 98 |  | Painting Contractor | 160h |
| 103 | 1.12.3 | Install conduit at ceiling plenum space | 15d | 2000-12-08 | 2000-12-29 | 96 | 25d |  | 120h |
| 104 | 1.12.4 | Install duct in ceiling plenum space | 15d | 2001-01-12 | 2001-02-02 | 97, 103 | 20d |  | 120h |
| 105 | 1.12.5 | Install ceiling grid | 10d | 2001-02-02 | 2001-02-16 | 97, 104 | 20d |  | 80h |
| 106 | 1.12.6 | Install ceiling tile | 10d | 2001-02-16 | 2001-03-02 | 105 | 20d |  | 80h |
| 107 | 1.12.7 | Hang wallpaper | 10d | 2001-02-16 | 2001-03-02 | 105 | 20d | Painting Contractor | 80h |
| 108 | 1.12.8 | Install building carpet | 20d | 2001-03-02 | 2001-03-30 | 102 |  |  | 160h |
| 109 | 1.12.9 | Install hardware and accessories | 15d | 2001-03-02 | 2001-03-23 | 102 | 5d |  | 120h |
| 110 | 1.12.10 | Complete interior and exterior sod and plantings | 10d | 2001-03-02 | 2001-03-16 | 102 | 7d |  | 80h |
| 111 | 1.12.11 | Pave, curb, and stripe parking lot | 10d | 2001-03-16 | 2001-03-30 | 110 | 7d |  | 80h |

| ID | WBS | Task | Duration | Start | Finish | Predecessors | Total slack | Work |
| --- | --- | --- | --- | --- | --- | --- | --- | --- |
| 112 | 1.13 | **Elevators** | 40d | 2000-07-07 | 2000-09-01 |  | 154d |  |
| 113 | 1.13.1 | Set elevator equipment in shafts | 20d | 2000-07-07 | 2000-08-04 | 83, 48, 15 | 154d | 160h |
| 114 | 1.13.2 | Set equipment in mechanical room | 10d | 2000-08-04 | 2000-08-18 | 113 | 154d | 80h |
| 115 | 1.13.3 | Test and align doors and equipment | 10d | 2000-08-18 | 2000-09-01 | 114 | 154d | 80h |
| 116 | 1.14 | **Plumbing** | 90d | 2000-11-10 | 2001-03-16 |  | 10d |  |
| 117 | 1.14.1 | Rough-in plumbing in drywall walls | 20d | 2000-12-08 | 2001-01-05 | 96 | 35d | 160h |
| 118 | 1.14.2 | Tie-in fire line riser and set valves | 10d | 2000-11-10 | 2000-11-24 | 87 | 80d | 80h |
| 119 | 1.14.3 | Set plumbing fixtures and trim | 15d | 2001-01-05 | 2001-01-26 | 88, 117, 82 | 35d | 120h |
| 120 | 1.14.4 | Flush, test, and clean piping and fixtures | 10d | 2001-03-02 | 2001-03-16 | 102, 118, 119 | 10d | 80h |
| 121 | 1.15 | **Electrical** | 139d | 2000-08-21 | 2001-03-02 |  | 23d |  |
| 122 | 1.15.1 | Rough-in electrical in masonry walls | 20d | 2000-08-21 | 2000-09-16 | 78, 17 | 99d | 160h |
| 123 | 1.15.2 | Rough-in electrical in drywall walls | 20d | 2000-12-08 | 2001-01-05 | 96 | 35d | 160h |
| 124 | 1.15.3 | Pull wire in conduit and set area transformers | 15d | 2000-12-29 | 2001-01-19 | 122, 103 | 25d | 120h |
| 125 | 1.15.4 | Install and terminate electrical devices | 15d | 2001-01-19 | 2001-02-09 | 124, 123 | 25d | 120h |
| 126 | 1.15.5 | Make electrical terminations for HVAC equipment | 2d | 2001-01-19 | 2001-01-23 | 124, 94 | 51d | 16h |
| 127 | 1.15.6 | Install light fixtures - test and clean | 10d | 2001-02-16 | 2001-03-02 | 105, 125 | 20d | 80h |
| 128 | 1.16 | **Heating and Ventilating - AC** | 180d | 2000-07-07 | 2001-03-16 |  | 33d |  |
| 129 | 1.16.1 | Set equipment in mechanical room | 10d | 2000-07-07 | 2000-07-21 | 83, 18 | 168d | 80h |
| 130 | 1.16.2 | Rough-in mechanical in masonry walls | 20d | 2000-08-21 | 2000-09-16 | 78 | 127d | 160h |
| 131 | 1.16.3 | Rough-in mechanical in drywall walls | 10d | 2000-12-08 | 2000-12-22 | 96 | 93d | 80h |
| 132 | 1.16.4 | Install duct in building chase | 15d | 2000-12-08 | 2000-12-29 | 129, 130, 96 | 68d | 120h |
| 133 | 1.16.5 | Set HVAC trim and test and balance system | 20d | 2001-02-16 | 2001-03-16 | 105, 132, 126 | 33d | 160h |
| 134 | 1.17 | **Final Clean-up and Occupancy** | 60d | 2001-01-12 | 2001-04-06 |  | 18d |  |
| 135 | 1.17.1 | Install hard tile flooring in common areas | 5d | 2001-01-12 | 2001-01-19 | 97 | 46d | 40h |
| 136 | 1.17.2 | Clean hard tile floors | 4d | 2001-01-19 | 2001-01-25 | 135 | 46d | 16h |
| 137 | 1.17.3 | Remove debris from building and do final clean-up | 4d | 2001-03-30 | 2001-04-05 | 108, 107, 109, 110, 120, 127, 106, 136 |  | 32h |
| 138 | 1.17.4 | Substantial completion date | 1d | 2001-04-05 | 2001-04-06 | 137 | 18d | 8h |

| ID | WBS | Task | Duration | Start | Finish | Predecessors | Total slack | Resources | Work |
| --- | --- | --- | --- | --- | --- | --- | --- | --- | --- |
| 139 | 1.18 | **Complete Final Inspections** | 6d | 2001-04-05 | 2001-04-13 |  |  |  |  |
| 140 | 1.18.1 | Complete elevator inspection and certification | 3d | 2001-04-05 | 2001-04-10 | 137, 115 |  |  | 24h |
| 141 | 1.18.2 | Perform architect's inspection | 1d | 2001-04-10 | 2001-04-11 | 137, 111, 140 |  | G.C. Project Management [50%] | 8h |
| 142 | 1.18.3 | Perform local building agency inspection | 1d | 2001-04-11 | 2001-04-12 | 141 |  | G.C. Project Management [50%] | 8h |
| 143 | 1.18.4 | Perform Fire Marshal's inspection | 1d | 2001-04-12 | 2001-04-13 | 142 |  | G.C. Project Management [50%] | 8h |
| 144 | 1.19 | Complete punch list items from all inspections | 10d | 2001-04-13 | 2001-04-27 | 143 |  | Painting Contractor [11%] | 79.2h |
| 145 | 1.20 | Obtain certificate of occupancy | 2d | 2001-04-27 | 2001-05-01 | 144 |  | G.C. Project Management | 16h |
| 146 | 1.21 | Issue final completion documents including warranties | 1d | 2001-04-27 | 2001-04-28 | 144 | 1d | G.C. Project Management | 8h |
| 147 | 1.22 | Issue final request for payment | 1d | 2001-05-01 | 2001-05-02 | 145, 146 |  | G.C. Project Management [33%] | 7.92h |
